# 船厂智能监控项目

How a schedule from a web Gantt chart changed from version to version. A marks actual dates.

## Version 1 (saved 2026-05-19)

| ID | Task | Duration | Start | Finish |
| --- | --- | --- | --- | --- |
| 2 | 系统总体设计方案编写 | 2d | 2026-05-20 | 2026-05-21 |
| 3 | 系统总体设计方案评审 | 1d | 2026-05-22 | 2026-05-22 |
| 4 | 测试环境硬件准备（摄像头采购及安装、GPU服务器准备） | 6d | 2026-05-25 | 2026-06-01 |
| 5 | 测试环境基础环境搭建（关系型数据库、向量数据库、对象存储、缓存数据库搭建） | 2d | 2026-05-25 | 2026-05-26 |
| 6 | 桌面应用设计 | 2d | 2026-05-25 | 2026-05-26 |
| 7 | 后端功能详细设计 | 2d | 2026-05-25 | 2026-05-26 |
| 8 | 智能分析功能详细设计 | 2d | 2026-05-25 | 2026-05-26 |
| 9 | 后端系统框架以及表结构创建 | 1d | 2026-05-27 | 2026-05-27 |
| 10 | 设备管理页面开发 | 3d | 2026-05-27 | 2026-05-29 |
| 11 | 事件告警页面开发 | 3d | 2026-06-01 | 2026-06-03 |
| 12 | 配置管理页面开发 | 3d | 2026-06-04 | 2026-06-08 |
| 13 | 记录管理页面开发 | 3d | 2026-06-09 | 2026-06-11 |
| 14 | 设备管理相关功能后端开发 | 3d | 2026-05-28 | 2026-06-01 |
| 15 | 事件告警相关功能后端开发 | 3d | 2026-06-02 | 2026-06-04 |
| 16 | 配置管理相关功能后端开发 | 3d | 2026-06-05 | 2026-06-09 |
| 17 | 记录管理相关功能后端开发 | 3d | 2026-06-10 | 2026-06-12 |
| 18 | 视频流获取功能开发 | 1d | 2026-05-27 | 2026-05-27 |
| 19 | 人员检测跟踪以及身份识别功能开发 | 3d | 2026-05-28 | 2026-06-01 |

## Version 2 (saved 2026-05-20)

Last finish 2026-06-12 → 2026-10-02 (+112d).

Added:

| ID | Task | Duration | Start | Finish | Predecessors |
| --- | --- | --- | --- | --- | --- |
| 4 | 测试环境硬件准备（摄像头采购至少2台及安装、GPU服务器准备） | 6d | 2026-05-25 | 2026-06-01 |  |
| 5 | 测试环境基础环境搭建（关系型数据库、向量数据库、对象存储、缓存数据库搭建、消息队列） | 2d | 2026-05-25 | 2026-05-26 |  |
| 8 | 前端框架搭建、用户体系和权限控制功能开发 | 1d | 2026-05-27 | 2026-05-27 |  |
| 14 | 用户体系和权限功能开发 | 1d | 2026-05-27 | 2026-05-27 |  |
| 21 | 人员物品检测跟踪以及身份识别功能开发 | 6d | 2026-06-15 | 2026-06-22 | 20 |
| 22 | 现场验证人员物品检测跟踪效果（包括目标检测算法标注和训练） | 6d | 2026-06-23 | 2026-06-30 | 21 |
| 23 | 人员进出监控与在岗状态功能开发 | 1d | 2026-07-01 | 2026-07-01 | 22 |
| 24 | 电子围栏与越界管理功能开发 | 1d | 2026-07-02 | 2026-07-02 | 23 |
| 25 | 班组点名与人员统计功能开发 | 1d | 2026-07-03 | 2026-07-03 | 24 |
| 26 | 集装箱进出与堆放监控功能开发 | 2d | 2026-07-06 | 2026-07-07 | 25 |
| 27 | 小物件流转追踪功能开发 | 2d | 2026-07-08 | 2026-07-09 | 26 |
| 28 | 垃圾桶分类考核功能开发 | 2d | 2026-07-10 | 2026-07-13 | 27 |
| 29 | 物品占位与通道管控功能开发 | 1d | 2026-07-14 | 2026-07-14 | 28 |
| 30 | 空间冲突预警功能开发 | 2d | 2026-07-15 | 2026-07-16 | 29 |
| 31 | 异常时段报警功能开发 | 1d | 2026-07-17 | 2026-07-17 | 30 |
| 32 | 安全事件识别功能开发 | 2d | 2026-07-20 | 2026-07-21 | 31 |
| 33 | 敏感物品和军人信息保护功能开发 | 1d | 2026-07-22 | 2026-07-22 | 32 |
| 34 | **效果优化及现场验证** | 10d | 2026-07-23 | 2026-08-05 | 33 |
| 35 | 目标检测算法数据标注 | 5d | 2026-07-23 | 2026-07-29 | 33 |
| 36 | 目标检测算法训练 | 5d | 2026-07-30 | 2026-08-05 | 35 |
| 37 | 垃圾分类视频标注 | 2d | 2026-07-30 | 2026-07-31 | 35 |
| 38 | 垃圾分类模型训练 | 3d | 2026-08-03 | 2026-08-05 | 37 |
| 39 | 系统集成测试 | 15d | 2026-08-06 | 2026-08-26 | 34 |
| 40 | 系统性能测试 | 5d | 2026-08-06 | 2026-08-12 | 34 |
| 41 | 测试问题修复 | 5d | 2026-08-27 | 2026-09-02 | 39 |
| 42 | 系统回归测试 | 4d | 2026-09-03 | 2026-09-08 | 41 |
| 43 | 部署手册验证 | 3d | 2026-09-09 | 2026-09-11 | 42 |
| 44 | 现场系统部署 | 5d | 2026-09-14 | 2026-09-18 | 43 |
| 45 | 系统试运行 | 10d | 2026-09-21 | 2026-10-02 | 44 |
| 46 | 系统优化 | 10d | 2026-09-21 | 2026-10-02 | 44 |

Removed: 4 测试环境硬件准备（摄像头采购及安装、GPU服务器准备）; 5 测试环境基础环境搭建（关系型数据库、向量数据库、对象存储、缓存数据库搭建）; 19 人员检测跟踪以及身份识别功能开发

Changed:

| ID | Task | Start | Finish | Duration | Predecessors |
| --- | --- | --- | --- | --- | --- |
| 7 | **桌面应用设计** | 2026-05-25 → 2026-05-27 (+2d) | 2026-05-26 → 2026-06-12 (+17d) | 2d → 13d |  |
| 9 | 设备管理页面开发 | 2026-05-27 → 2026-05-28 (+1d) | 2026-05-29 → 2026-06-01 (+3d) |  | none → 8 |
| 10 | 事件告警页面开发 | 2026-06-01 → 2026-06-02 (+1d) | 2026-06-03 → 2026-06-04 (+1d) |  | none → 9 |
| 11 | 配置管理页面开发 | 2026-06-04 → 2026-06-05 (+1d) | 2026-06-08 → 2026-06-09 (+1d) |  | none → 10 |
| 12 | 记录管理页面开发 | 2026-06-09 → 2026-06-10 (+1d) | 2026-06-11 → 2026-06-12 (+1d) |  | none → 11 |
| 13 | **后端功能详细设计** | 2026-05-25 → 2026-05-27 (+2d) | 2026-05-26 → 2026-06-11 (+16d) | 2d → 12d |  |
| 15 | 设备管理相关功能后端开发 |  |  |  | none → 14 |
| 16 | 事件告警相关功能后端开发 |  |  |  | none → 15 |
| 17 | 配置管理相关功能后端开发 |  |  |  | none → 16 |
| 18 | 记录管理相关功能后端开发 |  | 2026-06-12 → 2026-06-11 (-1d) | 3d → 2d | none → 17 |
| 19 | **智能分析功能详细设计** | 2026-05-25 → 2026-06-12 (+18d) | 2026-05-26 → 2026-08-05 (+71d) | 2d → 39d |  |
| 20 | 视频流获取功能开发 | 2026-05-27 → 2026-06-12 (+16d) | 2026-05-27 → 2026-06-12 (+16d) |  |  |
