# 船坞智能监管 - 码头人员设备定位智慧管理系统

How a schedule from a web Gantt chart changed from version to version. A marks actual dates.

## Version 1 (saved 2026-05-21)

| ID | WBS | Task | Duration | Start | Finish | Predecessors |
| --- | --- | --- | --- | --- | --- | --- |
| 2 | 1 | **需求调研** | 5d | 2026-05-25 | 2026-05-29 |  |
| 3 |  | 系统需求调研与确认 | 5d | 2026-05-25 | 2026-05-29 |  |
| 4 |  | 服务器配置及安装方案确认 | 5d | 2026-05-25 | 2026-05-29 |  |
| 5 |  | 监控安装施工方案调研 | 5d | 2026-05-25 | 2026-05-29 |  |
| 6 | 2 | **摄像头选型与采购** | 10d | 2026-06-01 | 2026-06-12 |  |
| 7 |  | 摄像头选型 | 2d | 2026-06-01 | 2026-06-02 | 5 |
| 8 |  | 设备采购与到货 | 8d | 2026-06-03 | 2026-06-12 | 7 |
| 9 | 3 | **摄像头安装** | 15d | 2026-07-10 | 2026-07-30 |  |
| 10 |  | 一阶段安装与调试（先安装20台用于调试） | 5d | 2026-07-10 | 2026-07-16 |  |
| 11 |  | 二阶段安装与调试 | 10d | 2026-07-17 | 2026-07-30 | 10 |
| 12 | 4 | **系统开发** | 32d | 2026-06-01 | 2026-07-14 |  |
| 13 |  | 系统架构设计 | 2d | 2026-06-01 | 2026-06-02 | 3 |
| 14 |  | 部署架构设计 | 2d | 2026-06-03 | 2026-06-04 | 13 |
| 15 |  | 人员管理模块开发 | 10d | 2026-06-05 | 2026-06-18 | 14 |
| 16 |  | 物品管理模块开发 | 10d | 2026-06-19 | 2026-07-02 | 15 |
| 17 |  | 安全与隐私模块开发 | 4d | 2026-07-03 | 2026-07-08 | 16 |
| 18 |  | 智能预警模块开发 | 4d | 2026-07-09 | 2026-07-14 | 17 |
| 19 | 5 | **算法开发** | 15d | 2026-07-15 | 2026-08-04 |  |
| 20 |  | 目标检测跟踪算法开发 | 7d | 2026-07-15 | 2026-07-23 | 18 |
| 21 |  | 人员身份识别算法开发 | 4d | 2026-07-24 | 2026-07-29 | 20 |
| 22 |  | 垃圾投放识别算法开发 | 4d | 2026-07-30 | 2026-08-04 | 21 |
| 23 | 6 | **系统测试** | 70d | 2026-06-01 | 2026-09-04 |  |
| 24 |  | 测试用例设计 | 10d | 2026-06-01 | 2026-06-12 | 3 |
| 25 |  | 集成测试 | 15d | 2026-08-05 | 2026-08-25 | 22 |
| 26 |  | 性能测试 | 15d | 2026-08-17 | 2026-09-04 |  |
| 27 | 7 | **系统验证** | 18d | 2026-09-07 | 2026-09-30 |  |
| 28 |  | 现场验证环境测试 | 7d | 2026-09-07 | 2026-09-15 | 26 |
| 29 |  | 性能验证 | 5d | 2026-09-16 | 2026-09-22 | 28 |
| 30 |  | 高可用及稳定性测试 | 4d | 2026-09-23 | 2026-09-28 | 29 |
| 31 |  | 安装部署测试 | 2d | 2026-09-29 | 2026-09-30 | 30 |
| 32 | 8 | **系统上线** | 4d | 2026-10-08 | 2026-10-13 |  |
| 33 |  | 系统线上环境部署 | 2d | 2026-10-08 | 2026-10-09 |  |
| 34 |  | 系统使用及运维培训 | 1d | 2026-10-12 | 2026-10-12 | 33 |
| 35 |  | 系统正式上线 | 1d | 2026-10-13 | 2026-10-13 | 34 |

## Version 2 (saved 2026-05-21)

Last finish stays 2026-10-13.

Added:

| ID | Task | Duration | Start | Finish | Predecessors |
| --- | --- | --- | --- | --- | --- |
| 19 | **数据标注及模型训练** | 15d | 2026-07-15 | 2026-08-04 |  |
| 20 | 目标检测跟踪模型训练 | 7d | 2026-07-15 | 2026-07-23 | 18 |
| 21 | 人员身份识别模型训练 | 4d | 2026-07-24 | 2026-07-29 | 20 |
| 22 | 垃圾投放识别模型训练 | 4d | 2026-07-30 | 2026-08-04 | 21 |

Removed: 19 算法开发; 20 目标检测跟踪算法开发; 21 人员身份识别算法开发; 22 垃圾投放识别算法开发

Changed:

| ID | Task | Predecessors |
| --- | --- | --- |
| 25 | 集成测试 | 垃圾投放识别算法开发 → 22 |
